Schedule from MS Project, 2019-06-03 to 2019-11-28, costs in €.

## Calendars

- Intranet_KlinikIT: Mon-Fri 08:00-12:00, 13:00-17:00; Sat-Sun off. Exceptions (off unless hours are given): 2019-10-03 (Tag der deutschen Einheit), 2019-10-31 (Reformationstag).

## Resources

| Resource | Group | Rate |
| --- | --- | --- |
| Lukas Schmidt | SC - Projektleiter | 156.25 |
| Robin Behrendt | SE - Teamleiter Entwicklung / Scrum Master | 143.75 |
| Leon König | E - Entwickler | 100 |
| Leon Kuß | SE - Teamleiter Test | 143.75 |
| Gerrit Peitz | E - Entwickler | 100 |
| Luca Siekmann | E - Entwickler | 100 |
| Theo Test | E - Tester | 100 |
| Karl Kontrolle | E - Tester | 100 |
| Petra Prüfung | E - Tester | 100 |
| Ina Integration | I - Systemintegrator | 93.75 |
| Anna Lyse | C - Business Analyst | 112.5 |
| Andreas Auswertung | C - Business Analyst | 112.5 |
| Tobias Training | C - Coach | 112.5 |
| Arthur Architektur | C - Software Architekt | 112.5 |
| Dennis Design | E - Software Designer | 100 |

## Schedule

| ID | WBS | Task | Type | Duration | Start | Finish | Predecessors | Total slack | Free slack | Constraint | Resources | Work | Cost |
| --- | --- | --- | --- | --- | --- | --- | --- | --- | --- | --- | --- | --- | --- |
| 1 | 1 | Projektstart | milestone | 0d | 2019-06-03 08:00 | 2019-06-03 08:00 |  | 0d |  | start no earlier than 2019-06-03 08:00 |  |  |  |
| 2 | 2 | Projektmanagement |  | 124d | 2019-06-03 08:00 | 2019-11-27 17:00 | 1 | 0.5d |  |  | Lukas Schmidt [12.5%] | 124h | 19,375 |
| 3 | 3 | **Analysephase** |  | 10d | 2019-06-03 08:00 | 2019-06-14 17:00 | 1 | 0d |  |  |  | 144h | 16,100 |
| 4 | 3.1 | Ist-Analyse durchführen |  | 5d | 2019-06-03 08:00 | 2019-06-07 17:00 | 1SS | 0d |  |  | Anna Lyse; Gerrit Peitz; Luca Siekmann; Robin Behrendt; Leon König | 104h | 11,600 |
| 5 | 3.2 | Anforderungen erheben |  | 5d | 2019-06-10 08:00 | 2019-06-14 17:00 | 4 | 0d |  |  | Anna Lyse | 40h | 4,500 |
| 6 | 4 | **Konzeptionsphase** |  | 9d | 2019-06-17 08:00 | 2019-06-27 17:00 | 3 | 0d |  |  |  | 88h | 10,100 |
| 7 | 4.1 | Grobkonzept vervollständigen |  | 2d | 2019-06-17 08:00 | 2019-06-18 17:00 | 4, 5 | 0d |  |  | Arthur Architektur | 16h | 1,800 |
| 8 | 4.2 | Feinkonzept erstellen |  | 5d | 2019-06-19 08:00 | 2019-06-25 17:00 | 7 | 0d |  |  | Dennis Design | 40h | 4,000 |
| 9 | 4.3 | Berechtigungskonzept erstellen |  | 2d | 2019-06-19 08:00 | 2019-06-20 17:00 | 7 | 3d |  |  | Anna Lyse | 16h | 1,800 |
| 10 | 4.4 | Product-Backlog anlegen |  | 2d | 2019-06-26 08:00 | 2019-06-27 17:00 | 8, 9 | 0d |  |  | Lukas Schmidt | 16h | 2,500 |
| 11 | 5 | **Realisierungsphase** |  | 106.5d | 2019-07-01 08:00 | 2019-11-28 12:00 | 6FS+1d | 0d |  |  |  | 4108h | 458,350.02 |
| 12 | 5.1 | **Entwicklungssprints** |  | 98d | 2019-07-01 08:00 | 2019-11-15 17:00 | 6FS+1d | 0d |  |  |  | 3996h | 446,125.02 |
| 13 | 5.1.1 | **Sprint 1** |  | 10d | 2019-07-01 08:00 | 2019-07-12 17:00 | 6FS+1d | 0d |  |  |  | 370h | 41,362.5 |
| 14 | 5.1.1.1 | Sprint Planning 1 |  | 0.5d | 2019-07-01 08:00 | 2019-07-01 12:00 | 6FS+1d | 0d |  |  | Lukas Schmidt; Leon König; Leon Kuß; Luca Siekmann; Robin Behrendt; Gerrit Peitz | 22h | 2,662.5 |
| 15 | 5.1.1.2 | Kernsystem implementieren |  | 8.5d | 2019-07-01 13:00 | 2019-07-11 17:00 | 14 | 0.5d | 0d |  | Robin Behrendt; Gerrit Peitz; Leon König; Luca Siekmann | 256h | 28,400 |
| 16 | 5.1.1.3 | Test vorbereiten 1 |  | 1.5d | 2019-07-01 13:00 | 2019-07-02 17:00 | 14 | 8d |  |  | Theo Test; Petra Prüfung; Leon Kuß | 40h | 4,350 |
| 17 | 5.1.1.4 | Refinement 1 |  | 0.5d | 2019-07-08 08:00 | 2019-07-08 12:00 | 14SS+5d | 4.5d |  |  | Leon König; Luca Siekmann; Lukas Schmidt; Robin Behrendt; Gerrit Peitz | 18h | 2,087.5 |
| 18 | 5.1.1.5 | Betriebshandbuch erstellen 1 |  | 0.5d | 2019-07-12 08:00 | 2019-07-12 12:00 | 15 | 0.5d |  |  | Robin Behrendt; Gerrit Peitz; Leon König; Luca Siekmann | 16h | 1,775 |
| 19 | 5.1.1.6 | Sprint Review & Retrospektive 1 |  | 0.5d | 2019-07-12 13:00 | 2019-07-12 17:00 | 14SS+9.5d | 0d |  |  | Lukas Schmidt; Dennis Design; Leon König; Luca Siekmann; Robin Behrendt | 18h | 2,087.5 |
| 20 | 5.1.2 | **Sprint 2** |  | 10d | 2019-07-15 08:00 | 2019-07-26 17:00 | 13 | 0d |  |  |  | 410h | 45,762.51 |
| 21 | 5.1.2.1 | Sprint Planning 2 |  | 0.5d | 2019-07-15 08:00 | 2019-07-15 12:00 | 13 | 0d |  |  | Lukas Schmidt; Leon König; Leon Kuß; Luca Siekmann; Robin Behrendt; Gerrit Peitz | 22h | 2,662.5 |
| 22 | 5.1.2.2 | Prozesse implementieren 1 |  | 8d | 2019-07-15 13:00 | 2019-07-25 12:00 | 21 | 1d |  |  | Robin Behrendt; Gerrit Peitz; Leon König; Luca Siekmann | 248h | 27,600 |
| 23 | 5.1.2.3 | Test durchführen 1 |  | 1.42d | 2019-07-15 08:00 | 2019-07-16 11:23 | 16 | 1.5d | 0d |  | Theo Test; Petra Prüfung; Leon Kuß | 24h | 2,575.01 |
| 24 | 5.1.2.4 | Test vorbereiten 2 |  | 1.58d | 2019-07-16 11:23 | 2019-07-17 17:00 | 23 | 7d |  |  | Petra Prüfung; Theo Test [80%]; Leon Kuß | 40h | 4,525 |
| 25 | 5.1.2.5 | Fehler beheben 1 |  | 1d | 2019-07-16 16:23 | 2019-07-17 17:00 | 23FS+0.5d | 1.5d | 0d |  | Gerrit Peitz | 8h | 800 |
| 26 | 5.1.2.6 | Software installieren 1 |  | 0.5d | 2019-07-18 08:00 | 2019-07-18 12:00 | 25 | 1.5d | 0d |  | Ina Integration | 4h | 375 |
| 27 | 5.1.2.7 | Nutzerakzeptanzumfrage durchführen 1 |  | 0.5d | 2019-07-22 13:00 | 2019-07-22 17:00 | 26FS+2d | 1.5d | 0d |  | Andreas Auswertung | 4h | 450 |
| 28 | 5.1.2.8 | Nutzerakzeptanzumfrage auswerten 1 |  | 0.5d | 2019-07-25 08:00 | 2019-07-25 12:00 | 27FS+2d | 1.5d |  |  | Andreas Auswertung | 4h | 450 |
| 29 | 5.1.2.9 | Performanceziele überprüfen 1 |  | 0.5d | 2019-07-18 13:00 | 2019-07-18 17:00 | 26 | 6d |  |  | Ina Integration | 4h | 375 |
| 30 | 5.1.2.10 | Refinement 2 |  | 0.5d | 2019-07-22 08:00 | 2019-07-22 12:00 | 21SS+5d | 4.5d |  |  | Leon König; Luca Siekmann; Lukas Schmidt; Robin Behrendt; Gerrit Peitz | 18h | 2,087.5 |
| 31 | 5.1.2.11 | Betriebshandbuch erstellen 2 |  | 0.5d | 2019-07-26 13:00 | 2019-07-26 17:00 | 22 | 0d |  | as late as possible | Robin Behrendt; Gerrit Peitz; Leon König; Luca Siekmann | 16h | 1,775 |
| 32 | 5.1.2.12 | Sprint Review & Retrospektive 2 |  | 0.5d | 2019-07-26 13:00 | 2019-07-26 17:00 | 21SS+9.5d | 0d |  |  | Lukas Schmidt; Dennis Design; Leon König; Luca Siekmann; Robin Behrendt | 18h | 2,087.5 |

Notes:
- 13: FERTIG
- 14: Feste Dauer
- 15: Feste Einheiten
- 16: Feste Arbeit
- 17: Feste Dauer
- 18: Feste Einheiten
- 19: Feste Dauer
- 21: Feste Dauer
- 22: Feste Einheiten
- 23: Feste Arbeit
- 24: Feste Arbeit
- 25: Feste Arbeit
- 26: Feste Einheiten
- 27: Feste Arbeit
- 28: Feste Arbeit
- 29: Feste Arbeit
- 30: Feste Dauer
- 31: Feste Einheiten
- 32: Feste Dauer

| ID | WBS | Task | Duration | Start | Finish | Predecessors | Total slack | Free slack | Constraint | Resources | Work | Cost |
| --- | --- | --- | --- | --- | --- | --- | --- | --- | --- | --- | --- | --- |
| 33 | 5.1.3 | **Sprint 3** | 10d | 2019-07-29 08:00 | 2019-08-09 17:00 | 20 | 0d |  |  |  | 410h | 45,762.5 |
| 34 | 5.1.3.1 | Sprint Planning 3 | 0.5d | 2019-07-29 08:00 | 2019-07-29 12:00 | 20 | 0d |  |  | Gerrit Peitz; Leon König; Leon Kuß; Luca Siekmann; Lukas Schmidt; Robin Behrendt | 22h | 2,662.5 |
| 35 | 5.1.3.2 | Prozesse implementieren 2 | 8d | 2019-07-29 13:00 | 2019-08-08 12:00 | 34 | 1d |  |  | Gerrit Peitz; Leon König; Luca Siekmann; Robin Behrendt | 248h | 27,600 |
| 36 | 5.1.3.3 | Test durchführen 2 | 1.5d | 2019-07-29 08:00 | 2019-07-30 12:00 | 24 | 1.5d | 0d |  | Theo Test; Petra Prüfung; Leon Kuß | 24h | 2,575 |
| 37 | 5.1.3.4 | Test vorbereiten 3 | 1.5d | 2019-07-30 13:00 | 2019-07-31 17:00 | 36 | 7d |  |  | Petra Prüfung; Theo Test [80%]; Leon Kuß | 40h | 4,525 |
| 38 | 5.1.3.5 | Fehler beheben 2 | 1d | 2019-07-31 08:00 | 2019-07-31 17:00 | 36FS+0.5d | 1.5d | 0d |  | Leon König | 8h | 800 |
| 39 | 5.1.3.6 | Software installieren 2 | 0.5d | 2019-08-01 08:00 | 2019-08-01 12:00 | 38 | 1.5d | 0d |  | Ina Integration | 4h | 375 |
| 40 | 5.1.3.7 | Nutzerakzeptanzumfrage durchführen 2 | 0.5d | 2019-08-05 13:00 | 2019-08-05 17:00 | 39FS+2d | 1.5d | 0d |  | Andreas Auswertung | 4h | 450 |
| 41 | 5.1.3.8 | Nutzerakzeptanzumfrage auswerten 2 | 0.5d | 2019-08-08 08:00 | 2019-08-08 12:00 | 40FS+2d | 1.5d |  |  | Andreas Auswertung | 4h | 450 |
| 42 | 5.1.3.9 | Performanceziele überprüfen 2 | 0.5d | 2019-08-01 13:00 | 2019-08-01 17:00 | 39 | 6d |  |  | Ina Integration | 4h | 375 |
| 43 | 5.1.3.10 | Refinement 3 | 0.5d | 2019-08-05 08:00 | 2019-08-05 12:00 | 34SS+5d | 4.5d |  |  | Gerrit Peitz; Leon König; Luca Siekmann; Lukas Schmidt; Robin Behrendt | 18h | 2,087.5 |
| 44 | 5.1.3.11 | Betriebshandbuch erstellen 3 | 0.5d | 2019-08-09 13:00 | 2019-08-09 17:00 | 35 | 0d |  | as late as possible | Gerrit Peitz; Leon König; Luca Siekmann; Robin Behrendt | 16h | 1,775 |
| 45 | 5.1.3.12 | Sprint Review & Retrospektive 3 | 0.5d | 2019-08-09 13:00 | 2019-08-09 17:00 | 34SS+9.5d | 0d |  |  | Gerrit Peitz; Leon König; Luca Siekmann; Lukas Schmidt; Robin Behrendt | 18h | 2,087.5 |
| 46 | 5.1.4 | **Sprint 4** | 10d | 2019-08-12 08:00 | 2019-08-23 17:00 | 33 | 0d |  |  |  | 410h | 45,762.5 |
| 47 | 5.1.4.1 | Sprint Planning 4 | 0.5d | 2019-08-12 08:00 | 2019-08-12 12:00 | 33 | 0d |  |  | Gerrit Peitz; Leon König; Leon Kuß; Luca Siekmann; Lukas Schmidt; Robin Behrendt | 22h | 2,662.5 |
| 48 | 5.1.4.2 | Prozesse implementieren 3 | 8d | 2019-08-12 13:00 | 2019-08-22 12:00 | 47 | 1d |  |  | Gerrit Peitz; Leon König; Luca Siekmann; Robin Behrendt | 248h | 27,600 |
| 49 | 5.1.4.3 | Test durchführen 3 | 1.5d | 2019-08-12 08:00 | 2019-08-13 12:00 | 37 | 1.5d | 0d |  | Petra Prüfung; Theo Test [80%]; Leon Kuß | 24h | 2,575 |
| 50 | 5.1.4.4 | Test vorbereiten 4 | 1.5d | 2019-08-13 13:00 | 2019-08-14 17:00 | 49 | 7d |  |  | Petra Prüfung; Theo Test; Leon Kuß | 40h | 4,525 |
| 51 | 5.1.4.5 | Fehler beheben 3 | 1d | 2019-08-14 08:00 | 2019-08-14 17:00 | 49FS+0.5d | 1.5d | 0d |  | Luca Siekmann | 8h | 800 |
| 52 | 5.1.4.6 | Software installieren 3 | 0.5d | 2019-08-15 08:00 | 2019-08-15 12:00 | 51 | 1.5d | 0d |  | Ina Integration | 4h | 375 |
| 53 | 5.1.4.7 | Nutzerakzeptanzumfrage durchführen 3 | 0.5d | 2019-08-19 13:00 | 2019-08-19 17:00 | 52FS+2d | 1.5d | 0d |  | Andreas Auswertung | 4h | 450 |
| 54 | 5.1.4.8 | Nutzerakzeptanzumfrage auswerten 3 | 0.5d | 2019-08-22 08:00 | 2019-08-22 12:00 | 53FS+2d | 1.5d |  |  | Andreas Auswertung | 4h | 450 |
| 55 | 5.1.4.9 | Performanceziele überprüfen 3 | 0.5d | 2019-08-15 13:00 | 2019-08-15 17:00 | 52 | 6d |  |  | Ina Integration | 4h | 375 |
| 56 | 5.1.4.10 | Refinement 4 | 0.5d | 2019-08-19 08:00 | 2019-08-19 12:00 | 47SS+5d | 4.5d |  |  | Gerrit Peitz; Leon König; Luca Siekmann; Robin Behrendt; Lukas Schmidt | 18h | 2,087.5 |
| 57 | 5.1.4.11 | Betriebshandbuch erstellen 4 | 0.5d | 2019-08-23 13:00 | 2019-08-23 17:00 | 48 | 0d |  | as late as possible | Gerrit Peitz; Leon König; Luca Siekmann; Robin Behrendt | 16h | 1,775 |
| 58 | 5.1.4.12 | Sprint Review & Retrospektive 4 | 0.5d | 2019-08-23 13:00 | 2019-08-23 17:00 | 47SS+9.5d | 0d |  |  | Gerrit Peitz; Leon König; Luca Siekmann; Lukas Schmidt; Robin Behrendt | 18h | 2,087.5 |

Notes:
- 34: Feste Dauer
- 35: Feste Einheiten
- 36: Feste Arbeit
- 37: Feste Arbeit
- 38: Feste Arbeit
- 39: Feste Einheiten
- 40: Feste Arbeit
- 41: Feste Arbeit
- 42: Feste Arbeit
- 43: Feste Dauer
- 44: Feste Einheiten
- 45: Feste Dauer
- 47: Feste Dauer
- 48: Feste Einheiten
- 49: Feste Arbeit
- 50: Feste Arbeit
- 51: Feste Arbeit
- 52: Feste Einheiten
- 53: Feste Arbeit
- 54: Feste Arbeit
- 55: Feste Arbeit
- 56: Feste Dauer
- 57: Feste Einheiten
- 58: Feste Dauer

| ID | WBS | Task | Duration | Start | Finish | Predecessors | Total slack | Free slack | Constraint | Resources | Work | Cost |
| --- | --- | --- | --- | --- | --- | --- | --- | --- | --- | --- | --- | --- |
| 59 | 5.1.5 | **Sprint 5** | 10d | 2019-08-26 08:00 | 2019-09-06 17:00 | 46 | 0d |  |  |  | 410h | 45,762.5 |
| 60 | 5.1.5.1 | Sprint Planning 5 | 0.5d | 2019-08-26 08:00 | 2019-08-26 12:00 | 46 | 0d |  |  | Gerrit Peitz; Leon König; Leon Kuß; Luca Siekmann; Lukas Schmidt; Robin Behrendt | 22h | 2,662.5 |
| 61 | 5.1.5.2 | Prozesse implementieren 4 | 8d | 2019-08-26 13:00 | 2019-09-05 12:00 | 60 | 1d |  |  | Gerrit Peitz; Leon König; Luca Siekmann; Robin Behrendt | 248h | 27,600 |
| 62 | 5.1.5.3 | Test durchführen 4 | 1.5d | 2019-08-26 08:00 | 2019-08-27 12:00 | 50 | 1.5d | 0d |  | Petra Prüfung; Theo Test; Leon Kuß | 24h | 2,575 |
| 63 | 5.1.5.4 | Test vorbereiten 5 | 1.5d | 2019-08-27 13:00 | 2019-08-28 17:00 | 62 | 7d |  |  | Petra Prüfung; Theo Test; Leon Kuß | 40h | 4,525 |
| 64 | 5.1.5.5 | Fehler beheben 4 | 1d | 2019-08-28 08:00 | 2019-08-28 17:00 | 62FS+0.5d | 1.5d | 0d |  | Gerrit Peitz | 8h | 800 |
| 65 | 5.1.5.6 | Software installieren 4 | 0.5d | 2019-08-29 08:00 | 2019-08-29 12:00 | 64 | 1.5d | 0d |  | Ina Integration | 4h | 375 |
| 66 | 5.1.5.7 | Nutzerakzeptanzumfrage durchführen 4 | 0.5d | 2019-09-02 13:00 | 2019-09-02 17:00 | 65FS+2d | 1.5d | 0d |  | Andreas Auswertung | 4h | 450 |
| 67 | 5.1.5.8 | Nutzerakzeptanzumfrage auswerten 4 | 0.5d | 2019-09-05 08:00 | 2019-09-05 12:00 | 66FS+2d | 1.5d |  |  | Andreas Auswertung | 4h | 450 |
| 68 | 5.1.5.9 | Performanceziele überprüfen 4 | 0.5d | 2019-08-29 13:00 | 2019-08-29 17:00 | 65 | 6d |  |  | Ina Integration | 4h | 375 |
| 69 | 5.1.5.10 | Refinement 5 | 0.5d | 2019-09-02 08:00 | 2019-09-02 12:00 | 60SS+5d | 4.5d |  |  | Gerrit Peitz; Leon König; Luca Siekmann; Lukas Schmidt; Robin Behrendt | 18h | 2,087.5 |
| 70 | 5.1.5.11 | Betriebshandbuch erstellen 5 | 0.5d | 2019-09-06 13:00 | 2019-09-06 17:00 | 61 | 0d |  | as late as possible | Gerrit Peitz; Leon König; Luca Siekmann; Robin Behrendt | 16h | 1,775 |
| 71 | 5.1.5.12 | Sprint Review & Retrospektive 5 | 0.5d | 2019-09-06 13:00 | 2019-09-06 17:00 | 60SS+9.5d | 0d |  |  | Gerrit Peitz; Leon König; Luca Siekmann; Lukas Schmidt; Robin Behrendt | 18h | 2,087.5 |
| 72 | 5.1.6 | **Sprint 6** | 10d | 2019-09-09 08:00 | 2019-09-20 17:00 | 59 | 0d |  |  |  | 410h | 45,762.5 |
| 73 | 5.1.6.1 | Sprint Planning 6 | 0.5d | 2019-09-09 08:00 | 2019-09-09 12:00 | 59 | 0d |  |  | Gerrit Peitz; Leon König; Leon Kuß; Luca Siekmann; Lukas Schmidt; Robin Behrendt | 22h | 2,662.5 |
| 74 | 5.1.6.2 | "Schmankerl" implementieren 1 | 8d | 2019-09-09 13:00 | 2019-09-19 12:00 | 73 | 1d |  |  | Gerrit Peitz; Leon König; Luca Siekmann; Robin Behrendt | 248h | 27,600 |
| 75 | 5.1.6.3 | Test durchführen 5 | 1.5d | 2019-09-09 08:00 | 2019-09-10 12:00 | 63 | 1.5d | 0d |  | Petra Prüfung; Theo Test; Leon Kuß | 24h | 2,575 |
| 76 | 5.1.6.4 | Test vorbereiten 6 | 1.5d | 2019-09-10 13:00 | 2019-09-11 17:00 | 75 | 7d |  |  | Petra Prüfung; Theo Test; Leon Kuß | 40h | 4,525 |
| 77 | 5.1.6.5 | Fehler beheben 5 | 1d | 2019-09-11 08:00 | 2019-09-11 17:00 | 75FS+0.5d | 1.5d | 0d |  | Leon König | 8h | 800 |
| 78 | 5.1.6.6 | Software installieren 5 | 0.5d | 2019-09-12 08:00 | 2019-09-12 12:00 | 77 | 1.5d | 0d |  | Ina Integration | 4h | 375 |
| 79 | 5.1.6.7 | Nutzerakzeptanzumfrage durchführen 5 | 0.5d | 2019-09-16 13:00 | 2019-09-16 17:00 | 78FS+2d | 1.5d | 0d |  | Andreas Auswertung | 4h | 450 |
| 80 | 5.1.6.8 | Nutzerakzeptanzumfrage auswerten 5 | 0.5d | 2019-09-19 08:00 | 2019-09-19 12:00 | 79FS+2d | 1.5d |  |  | Andreas Auswertung | 4h | 450 |
| 81 | 5.1.6.9 | Performanceziele überprüfen 5 | 0.5d | 2019-09-12 13:00 | 2019-09-12 17:00 | 78 | 6d |  |  | Ina Integration | 4h | 375 |
| 82 | 5.1.6.10 | Refinement 6 | 0.5d | 2019-09-16 08:00 | 2019-09-16 12:00 | 73SS+5d | 4.5d |  |  | Gerrit Peitz; Leon König; Luca Siekmann; Lukas Schmidt; Robin Behrendt | 18h | 2,087.5 |
| 83 | 5.1.6.11 | Betriebshandbuch erstellen 6 | 0.5d | 2019-09-20 13:00 | 2019-09-20 17:00 | 74 | 0d |  | as late as possible | Gerrit Peitz; Leon König; Luca Siekmann; Robin Behrendt | 16h | 1,775 |
| 84 | 5.1.6.12 | Sprint Review & Retrospektive 6 | 0.5d | 2019-09-20 13:00 | 2019-09-20 17:00 | 73SS+9.5d | 0d |  |  | Gerrit Peitz; Leon König; Luca Siekmann; Lukas Schmidt; Robin Behrendt | 18h | 2,087.5 |

Notes:
- 60: Feste Dauer
- 61: Feste Einheiten
- 62: Feste Arbeit
- 63: Feste Arbeit
- 64: Feste Arbeit
- 65: Feste Einheiten
- 66: Feste Arbeit
- 67: Feste Arbeit
- 68: Feste Arbeit
- 69: Feste Dauer
- 70: Feste Einheiten
- 71: Feste Dauer
- 73: Feste Dauer
- 74: Feste Einheiten
- 75: Feste Arbeit
- 76: Feste Arbeit
- 77: Feste Arbeit
- 78: Feste Einheiten
- 79: Feste Arbeit
- 80: Feste Arbeit
- 81: Feste Arbeit
- 82: Feste Dauer
- 83: Feste Einheiten
- 84: Feste Dauer

| ID | WBS | Task | Duration | Start | Finish | Predecessors | Total slack | Free slack | Constraint | Resources | Work | Cost |
| --- | --- | --- | --- | --- | --- | --- | --- | --- | --- | --- | --- | --- |
| 85 | 5.1.7 | **Sprint 7** | 9d | 2019-09-23 08:00 | 2019-10-04 17:00 | 72 | 0d |  |  |  | 378h | 42,212.5 |
| 86 | 5.1.7.1 | Sprint Planning 7 | 0.5d | 2019-09-23 08:00 | 2019-09-23 12:00 | 72 | 0d |  |  | Gerrit Peitz; Leon König; Leon Kuß; Luca Siekmann; Lukas Schmidt; Robin Behrendt | 22h | 2,662.5 |
| 87 | 5.1.7.2 | "Schmankerl" implementieren 2 | 7.5d | 2019-09-23 13:00 | 2019-10-02 17:00 | 86 | 0.5d |  |  | Gerrit Peitz; Leon König; Luca Siekmann; Robin Behrendt | 216h | 24,050 |
| 88 | 5.1.7.3 | Test durchführen 6 | 1.5d | 2019-09-23 08:00 | 2019-09-24 12:00 | 76 | 1.5d | 0d |  | Petra Prüfung; Theo Test; Leon Kuß | 24h | 2,575 |
| 89 | 5.1.7.4 | Test vorbereiten 7 | 1.5d | 2019-09-24 13:00 | 2019-09-25 17:00 | 88 | 6d |  |  | Petra Prüfung; Theo Test; Leon Kuß | 40h | 4,525 |
| 90 | 5.1.7.5 | Fehler beheben 6 | 1d | 2019-09-25 08:00 | 2019-09-25 17:00 | 88FS+0.5d | 1.5d | 0d |  | Luca Siekmann | 8h | 800 |
| 91 | 5.1.7.6 | Software installieren 6 | 0.5d | 2019-09-26 08:00 | 2019-09-26 12:00 | 90 | 1.5d | 0d |  | Ina Integration | 4h | 375 |
| 92 | 5.1.7.7 | Nutzerakzeptanzumfrage durchführen 6 | 0.5d | 2019-09-30 13:00 | 2019-09-30 17:00 | 91FS+2d | 1.5d | 0d |  | Andreas Auswertung | 4h | 450 |
| 93 | 5.1.7.8 | Nutzerakzeptanzumfrage auswerten 6 | 0.5d | 2019-10-02 08:00 | 2019-10-02 12:00 | 92FS+1d | 1.5d |  |  | Andreas Auswertung | 4h | 450 |
| 94 | 5.1.7.9 | Performanceziele überprüfen 6 | 0.5d | 2019-09-26 13:00 | 2019-09-26 17:00 | 91 | 5d |  |  | Ina Integration | 4h | 375 |
| 95 | 5.1.7.10 | Refinement 7 | 0.5d | 2019-09-27 08:00 | 2019-09-27 12:00 | 86SS+4d | 4.5d |  |  | Gerrit Peitz; Leon König; Luca Siekmann; Lukas Schmidt; Robin Behrendt | 18h | 2,087.5 |
| 96 | 5.1.7.11 | Betriebshandbuch erstellen 7 | 0.5d | 2019-10-04 13:00 | 2019-10-04 17:00 | 87 | 0d |  | as late as possible | Gerrit Peitz; Leon König; Luca Siekmann; Robin Behrendt | 16h | 1,775 |
| 97 | 5.1.7.12 | Sprint Review & Retrospektive 7 | 0.5d | 2019-10-04 13:00 | 2019-10-04 17:00 | 86SS+8.5d | 0d |  |  | Gerrit Peitz; Leon König; Luca Siekmann; Lukas Schmidt; Robin Behrendt | 18h | 2,087.5 |
| 98 | 5.1.8 | **Sprint 8** | 10d | 2019-10-07 08:00 | 2019-10-18 17:00 | 85 | 0d |  |  |  | 410h | 45,762.5 |
| 99 | 5.1.8.1 | Sprint Planning 8 | 0.5d | 2019-10-07 08:00 | 2019-10-07 12:00 | 85 | 0d |  |  | Gerrit Peitz; Leon König; Leon Kuß; Luca Siekmann; Lukas Schmidt; Robin Behrendt | 22h | 2,662.5 |
| 100 | 5.1.8.2 | "Schmankerl" implementieren 3 | 4d | 2019-10-07 13:00 | 2019-10-11 12:00 | 99 | 1d | 0d |  | Gerrit Peitz; Leon König; Luca Siekmann; Robin Behrendt | 120h | 13,400 |
| 101 | 5.1.8.3 | Zusatzfunktionen implementieren 1 | 4d | 2019-10-11 13:00 | 2019-10-17 12:00 | 99, 100 | 1d |  |  | Gerrit Peitz; Leon König; Luca Siekmann; Robin Behrendt | 128h | 14,200 |
| 102 | 5.1.8.4 | Test durchführen 7 | 1.5d | 2019-10-07 08:00 | 2019-10-08 12:00 | 89 | 1.5d | 0d |  | Petra Prüfung; Theo Test; Leon Kuß | 24h | 2,575 |
| 103 | 5.1.8.5 | Test vorbereiten 8 | 1.5d | 2019-10-08 13:00 | 2019-10-09 17:00 | 102 | 7d |  |  | Petra Prüfung; Theo Test; Leon Kuß | 40h | 4,525 |
| 104 | 5.1.8.6 | Fehler beheben 7 | 1d | 2019-10-09 08:00 | 2019-10-09 17:00 | 102FS+0.5d | 1.5d | 0d |  | Gerrit Peitz | 8h | 800 |
| 105 | 5.1.8.7 | Software installieren 7 | 0.5d | 2019-10-10 08:00 | 2019-10-10 12:00 | 104 | 1.5d | 0d |  | Ina Integration | 4h | 375 |
| 106 | 5.1.8.8 | Nutzerakzeptanzumfrage durchführen 7 | 0.5d | 2019-10-14 13:00 | 2019-10-14 17:00 | 105FS+2d | 1.5d | 0d |  | Andreas Auswertung | 4h | 450 |
| 107 | 5.1.8.9 | Nutzerakzeptanzumfrage auswerten 7 | 0.5d | 2019-10-17 08:00 | 2019-10-17 12:00 | 106FS+2d | 1.5d |  |  | Andreas Auswertung | 4h | 450 |
| 108 | 5.1.8.10 | Performanceziele überprüfen 7 | 0.5d | 2019-10-10 13:00 | 2019-10-10 17:00 | 105 | 6d |  |  | Ina Integration | 4h | 375 |
| 109 | 5.1.8.11 | Refinement 8 | 0.5d | 2019-10-14 08:00 | 2019-10-14 12:00 | 99SS+5d | 4.5d |  |  | Gerrit Peitz; Leon König; Luca Siekmann; Lukas Schmidt; Robin Behrendt | 18h | 2,087.5 |
| 110 | 5.1.8.12 | Betriebshandbuch erstellen 8 | 0.5d | 2019-10-18 13:00 | 2019-10-18 17:00 | 101 | 0d |  | as late as possible | Gerrit Peitz; Leon König; Luca Siekmann; Robin Behrendt | 16h | 1,775 |
| 111 | 5.1.8.13 | Sprint Review & Retrospektive 8 | 0.5d | 2019-10-18 13:00 | 2019-10-18 17:00 | 99SS+9.5d | 0d |  |  | Gerrit Peitz; Leon König; Luca Siekmann; Lukas Schmidt; Robin Behrendt | 18h | 2,087.5 |

Notes:
- 86: Feste Dauer
- 87: Feste Einheiten
- 88: Feste Arbeit
- 89: Feste Arbeit
- 90: Feste Arbeit
- 91: Feste Einheiten
- 92: Feste Arbeit
- 93: Feste Arbeit
- 94: Feste Arbeit
- 95: Feste Dauer
- 96: Feste Einheiten
- 97: Feste Dauer
- 99: Feste Dauer
- 100: Feste Einheiten
- 101: Feste Einheiten
- 102: Feste Arbeit
- 103: Feste Arbeit
- 104: Feste Arbeit
- 105: Feste Einheiten
- 106: Feste Arbeit
- 107: Feste Arbeit
- 108: Feste Arbeit
- 109: Feste Dauer
- 110: Feste Einheiten
- 111: Feste Dauer

| ID | WBS | Task | Duration | Start | Finish | Predecessors | Total slack | Free slack | Constraint | Resources | Work | Cost |
| --- | --- | --- | --- | --- | --- | --- | --- | --- | --- | --- | --- | --- |
| 112 | 5.1.9 | **Sprint 9** | 9d | 2019-10-21 08:00 | 2019-11-01 17:00 | 98 | 0d |  |  |  | 378h | 42,212.5 |
| 113 | 5.1.9.1 | Sprint Planning 9 | 0.5d | 2019-10-21 08:00 | 2019-10-21 12:00 | 98 | 0d |  |  | Gerrit Peitz; Leon König; Leon Kuß; Luca Siekmann; Lukas Schmidt; Robin Behrendt | 22h | 2,662.5 |
| 114 | 5.1.9.2 | Zusatzfunktionen implementieren 2 | 7.5d | 2019-10-21 13:00 | 2019-10-30 17:00 | 113 | 0.5d |  |  | Gerrit Peitz; Leon König; Luca Siekmann; Robin Behrendt | 216h | 24,050 |
| 115 | 5.1.9.3 | Test durchführen 8 | 1.5d | 2019-10-21 08:00 | 2019-10-22 12:00 | 103 | 1.5d | 0d |  | Petra Prüfung; Theo Test; Leon Kuß | 24h | 2,575 |
| 116 | 5.1.9.4 | Test vorbereiten 9 | 1.5d | 2019-10-22 13:00 | 2019-10-23 17:00 | 115 | 6d |  |  | Petra Prüfung; Theo Test; Leon Kuß | 40h | 4,525 |
| 117 | 5.1.9.5 | Fehler beheben 8 | 1d | 2019-10-23 08:00 | 2019-10-23 17:00 | 115FS+0.5d | 1.5d | 0d |  | Leon König | 8h | 800 |
| 118 | 5.1.9.6 | Software installieren 8 | 0.5d | 2019-10-24 08:00 | 2019-10-24 12:00 | 117 | 1.5d | 0d |  | Ina Integration | 4h | 375 |
| 119 | 5.1.9.7 | Nutzerakzeptanzumfrage durchführen 8 | 0.5d | 2019-10-28 13:00 | 2019-10-28 17:00 | 118FS+2d | 1.5d | 0d |  | Andreas Auswertung | 4h | 450 |
| 120 | 5.1.9.8 | Nutzerakzeptanzumfrage auswerten 8 | 0.5d | 2019-10-30 08:00 | 2019-10-30 12:00 | 119FS+1d | 1.5d |  |  | Andreas Auswertung | 4h | 450 |
| 121 | 5.1.9.9 | Performanceziele überprüfen 8 | 0.5d | 2019-10-24 13:00 | 2019-10-24 17:00 | 118 | 5d |  |  | Ina Integration | 4h | 375 |
| 122 | 5.1.9.10 | Refinement 9 | 0.5d | 2019-10-25 08:00 | 2019-10-25 12:00 | 113SS+4d | 4.5d |  |  | Gerrit Peitz; Leon König; Luca Siekmann; Lukas Schmidt; Robin Behrendt | 18h | 2,087.5 |
| 123 | 5.1.9.11 | Betriebshandbuch erstellen 9 | 0.5d | 2019-11-01 13:00 | 2019-11-01 17:00 | 114 | 0d |  | as late as possible | Gerrit Peitz; Leon König; Luca Siekmann; Robin Behrendt | 16h | 1,775 |
| 124 | 5.1.9.12 | Sprint Review & Retrospektive 9 | 0.5d | 2019-11-01 13:00 | 2019-11-01 17:00 | 113SS+8.5d | 0d |  |  | Gerrit Peitz; Leon König; Luca Siekmann; Lukas Schmidt; Robin Behrendt | 18h | 2,087.5 |
| 125 | 5.1.10 | **Sprint 10** | 10d | 2019-11-04 08:00 | 2019-11-15 17:00 | 112 | 0d |  |  |  | 410h | 45,762.5 |
| 126 | 5.1.10.1 | Sprint Planning 10 | 0.5d | 2019-11-04 08:00 | 2019-11-04 12:00 | 112 | 0d |  |  | Gerrit Peitz; Leon König; Leon Kuß; Luca Siekmann; Lukas Schmidt; Robin Behrendt | 22h | 2,662.5 |
| 127 | 5.1.10.2 | Zusatzfunktionen implementieren 3 | 8d | 2019-11-04 13:00 | 2019-11-14 12:00 | 126 | 1d |  |  | Gerrit Peitz; Leon König; Luca Siekmann; Robin Behrendt | 248h | 27,600 |
| 128 | 5.1.10.3 | Test durchführen 9 | 1.5d | 2019-11-04 08:00 | 2019-11-05 12:00 | 116 | 1.5d | 0d |  | Petra Prüfung; Theo Test; Leon Kuß | 24h | 2,575 |
| 129 | 5.1.10.4 | Test vorbereiten 10 | 1.5d | 2019-11-05 13:00 | 2019-11-06 17:00 | 128 | 7d |  |  | Petra Prüfung; Theo Test; Leon Kuß | 40h | 4,525 |
| 130 | 5.1.10.5 | Fehler beheben 9 | 1d | 2019-11-06 08:00 | 2019-11-06 17:00 | 128FS+0.5d | 1.5d | 0d |  | Luca Siekmann | 8h | 800 |
| 131 | 5.1.10.6 | Software installieren 9 | 0.5d | 2019-11-07 08:00 | 2019-11-07 12:00 | 130 | 1.5d | 0d |  | Ina Integration | 4h | 375 |
| 132 | 5.1.10.7 | Nutzerakzeptanzumfrage durchführen 9 | 0.5d | 2019-11-11 13:00 | 2019-11-11 17:00 | 131FS+2d | 1.5d | 0d |  | Andreas Auswertung | 4h | 450 |
| 133 | 5.1.10.8 | Nutzerakzeptanzumfrage auswerten 9 | 0.5d | 2019-11-14 08:00 | 2019-11-14 12:00 | 132FS+2d | 1.5d |  |  | Andreas Auswertung | 4h | 450 |
| 134 | 5.1.10.9 | Performanceziele überprüfen 9 | 0.5d | 2019-11-07 13:00 | 2019-11-07 17:00 | 131 | 6d |  |  | Ina Integration | 4h | 375 |
| 135 | 5.1.10.10 | Refinement 10 | 0.5d | 2019-11-11 08:00 | 2019-11-11 12:00 | 126SS+5d | 4.5d |  |  | Gerrit Peitz; Leon König; Luca Siekmann; Lukas Schmidt; Robin Behrendt | 18h | 2,087.5 |
| 136 | 5.1.10.11 | Betriebshandbuch erstellen 10 | 0.5d | 2019-11-15 13:00 | 2019-11-15 17:00 | 127 | 0d |  | as late as possible | Gerrit Peitz; Leon König; Luca Siekmann; Robin Behrendt | 16h | 1,775 |
| 137 | 5.1.10.12 | Sprint Review & Retrospektive 10 | 0.5d | 2019-11-15 13:00 | 2019-11-15 17:00 | 126SS+9.5d | 0d |  |  | Gerrit Peitz; Leon König; Luca Siekmann; Lukas Schmidt; Robin Behrendt | 18h | 2,087.5 |

Notes:
- 113: Feste Dauer
- 114: Feste Einheiten
- 115: Feste Arbeit
- 116: Feste Arbeit
- 117: Feste Arbeit
- 118: Feste Einheiten
- 119: Feste Arbeit
- 120: Feste Arbeit
- 121: Feste Arbeit
- 122: Feste Dauer
- 123: Feste Einheiten
- 124: Feste Dauer
- 126: Feste Dauer
- 127: Feste Einheiten
- 128: Feste Arbeit
- 129: Feste Arbeit
- 130: Feste Arbeit
- 131: Feste Einheiten
- 132: Feste Arbeit
- 133: Feste Arbeit
- 134: Feste Arbeit
- 135: Feste Dauer
- 136: Feste Einheiten
- 137: Feste Dauer

| ID | WBS | Task | Duration | Start | Finish | Predecessors | Total slack | Resources | Work | Cost |
| --- | --- | --- | --- | --- | --- | --- | --- | --- | --- | --- |
| 138 | 5.2 | **Finalisierungsphase** | 8.5d | 2019-11-18 08:00 | 2019-11-28 12:00 | 125 | 0d |  | 112h | 12,225 |
| 139 | 5.2.1 | Test durchführen 10 | 1.5d | 2019-11-18 08:00 | 2019-11-19 12:00 | 129 | 0d | Petra Prüfung; Theo Test; Leon Kuß | 24h | 2,575 |
| 140 | 5.2.2 | Fehler beheben 10 | 1d | 2019-11-20 08:00 | 2019-11-20 17:00 | 139FS+0.5d | 0d | Leon König | 8h | 800 |
| 141 | 5.2.3 | Software installieren 10 | 0.5d | 2019-11-21 08:00 | 2019-11-21 12:00 | 140 | 0d | Ina Integration | 4h | 375 |
| 142 | 5.2.4 | Nutzerakzeptanzumfrage durchführen 10 | 0.5d | 2019-11-25 13:00 | 2019-11-25 17:00 | 141FS+2d | 0d | Andreas Auswertung | 4h | 450 |
| 143 | 5.2.5 | Nutzerakzeptanzumfrage auswerten 10 | 0.5d | 2019-11-28 08:00 | 2019-11-28 12:00 | 142FS+2d | 0d | Andreas Auswertung | 4h | 450 |
| 144 | 5.2.6 | Performanceziele überprüfen 10 | 0.5d | 2019-11-21 13:00 | 2019-11-21 17:00 | 141 | 4.5d | Ina Integration | 4h | 375 |
| 145 | 5.2.7 | Schulungskonzept erarbeiten | 8d | 2019-11-18 08:00 | 2019-11-27 17:00 | 125 | 0.5d | Tobias Training | 64h | 7,200 |
| 146 | 6 | Schulung durchführen | 10d | 2019-06-03 08:00 | 2019-06-14 17:00 |  | 116.5d |  |  |  |

Notes:
- 139: Feste Arbeit
- 140: Feste Arbeit
- 141: Feste Einheiten
- 142: Feste Arbeit
- 143: Feste Arbeit
- 144: Feste Arbeit
- 145: Feste Arbeit
